# elaboration_project_plan

Schedule from MS Project, 2006-11-01 to 2007-04-17.
Duke University

## Calendars

- Standard: Mon-Fri 08:00-12:00, 13:00-17:00; Sat-Sun off.

## Resources

| Resource |
| --- |
| Patrick |
| Ram |
| Elaborators |
| PriyatamElaborators |
| Development team |
| Pri |
| Priyatam |
| Ramakrishna |
| Kruttik |
| Manav |
| Developers |
| Development teatm |
| BAH |
| Adopters |
| Pryatam |

## Schedule

| ID | WBS | Task | Type | Duration | Start | Finish | Predecessors | Total slack | Free slack | Constraint |
| --- | --- | --- | --- | --- | --- | --- | --- | --- | --- | --- |
| 1 | 1 | **Template iteration (eligibility, study personnel, multi-site study)** |  | 34d | 2007-03-01 | 2007-04-17 |  | 0d |  |  |
| 2 | 1.1 | Iteration start | milestone | 0d | 2007-03-01 | 2007-03-01 |  | 0d |  | start no earlier than 2007-03-01 |
| 3 | 1.2 | **Project Management** |  | 30d | 2007-03-01 | 2007-04-11 | 2 | 4d |  |  |
| 4 | 1.2.1 | **Draft project plan (task 1.1)** |  | 30d | 2007-03-01 | 2007-04-11 |  | 4d |  |  |
| 5 | 1.2.1.1 | Developer draft |  | 5d | 2007-03-01 | 2007-03-07 |  | 4d | 0d |  |
| 6 | 1.2.1.2 | BAH review |  | 5d | 2007-03-08 | 2007-03-14 | 5 | 4d | 0d |  |
| 7 | 1.2.1.3 | Developer update |  | 5d | 2007-03-15 | 2007-03-21 | 6 | 4d | 0d |  |
| 8 | 1.2.1.4 | Adopter review |  | 3d | 2007-03-22 | 2007-03-26 | 7 | 4d | 0d |  |
| 9 | 1.2.1.5 | Developer update |  | 2d | 2007-03-27 | 2007-03-28 | 8 | 4d | 0d |  |
| 10 | 1.2.1.6 | Deliver project plan to BAH (task 1.1) | milestone | 0d | 2007-03-28 | 2007-03-28 | 9 | 4d | 0d |  |
| 11 | 1.2.1.7 | BAH review project plan (task 1.1) |  | 10d | 2007-03-29 | 2007-04-11 | 10 | 4d |  |  |
| 12 | 1.2.2 | **Update risk matrix (task 1.3.1)** |  | 20d | 2007-03-01 | 2007-03-28 |  | 4d |  |  |
| 13 | 1.2.2.1 | Update risk matrix for week 1 |  | 5d | 2007-03-01 | 2007-03-07 |  | 4d | 0d |  |
| 14 | 1.2.2.2 | Update risk matrix for week 2 |  | 5d | 2007-03-08 | 2007-03-14 | 13 | 4d | 0d |  |
| 15 | 1.2.2.3 | Deliver risk matrix to BAH (task 1.3.1) | milestone | 0d | 2007-03-14 | 2007-03-14 | 14 | 4d | 0d |  |
| 16 | 1.2.2.4 | BAH review risk matrix (task 1.3.1) |  | 10d | 2007-03-15 | 2007-03-28 | 15 | 14d |  |  |
| 17 | 1.2.3 | **Monthly report (task 1.3.1)** |  | 20d | 2007-03-15 | 2007-04-11 | 15 | 4d |  |  |
| 18 | 1.2.3.1 | Update risk matrix for week 3 |  | 5d | 2007-03-15 | 2007-03-21 |  | 4d | 0d |  |
| 19 | 1.2.3.2 | Update risk matrix for week 4 |  | 5d | 2007-03-22 | 2007-03-28 | 18 | 4d | 0d |  |
| 20 | 1.2.3.3 | Deliver monthly report and risk matrix to BAH (task 1.3.1) | milestone | 0d | 2007-03-28 | 2007-03-28 | 19 | 4d | 0d |  |
| 21 | 1.2.3.4 | BAH review monthly report and risk matrix (task 1.3.1) |  | 10d | 2007-03-29 | 2007-04-11 | 20 | 4d |  |  |
| 22 | 1.3 | **Requirements and use cases** |  | 30d | 2007-03-01 | 2007-04-11 | 2 | 0d |  |  |
| 23 | 1.3.1 | **Create level 1 use cases and requirements** |  | 2d | 2007-03-01 | 2007-03-02 |  | 0d |  |  |
| 24 | 1.3.1.1 | Use case document (task 3.1.1) |  | 1d | 2007-03-01 | 2007-03-01 |  | 0d |  |  |
| 25 | 1.3.1.2 | Requirements document (3.2.1) |  | 1d | 2007-03-02 | 2007-03-02 | 24 | 0d |  |  |

| ID | WBS | Task | Duration | Start | Finish | Predecessors | Total slack | Free slack |
| --- | --- | --- | --- | --- | --- | --- | --- | --- |
| 26 | 1.3.2 | **Update use case document (task 3.1.1, task 5.2.1)** | 9d | 2007-03-05 | 2007-03-15 | 23 | 4d | 0d |
| 27 | 1.3.2.1 | **Update eligibility use cases** | 9d | 2007-03-05 | 2007-03-15 |  | 4d |  |
| 28 | 1.3.2.1.1 | Developer update | 2d | 2007-03-05 | 2007-03-06 |  | 4d | 0d |
| 29 | 1.3.2.1.2 | Adopter review | 5d | 2007-03-07 | 2007-03-13 | 28 | 4d | 0d |
| 30 | 1.3.2.1.3 | Developer update | 1d | 2007-03-14 | 2007-03-14 | 29 | 4d | 0d |
| 31 | 1.3.2.1.4 | Adopter sign-off | 1d | 2007-03-15 | 2007-03-15 | 30 | 4d |  |
| 32 | 1.3.2.2 | **Update study personel use cases** | 9d | 2007-03-05 | 2007-03-15 |  | 4d |  |
| 33 | 1.3.2.2.1 | Developer update | 2d | 2007-03-05 | 2007-03-06 |  | 4d | 0d |
| 34 | 1.3.2.2.2 | Adopter review | 5d | 2007-03-07 | 2007-03-13 | 33 | 4d | 0d |
| 35 | 1.3.2.2.3 | Developer update | 1d | 2007-03-14 | 2007-03-14 | 34 | 4d | 0d |
| 36 | 1.3.2.2.4 | Adopter sign-off | 1d | 2007-03-15 | 2007-03-15 | 35 | 4d |  |
| 37 | 1.3.2.3 | **Update multi-site trial use cases** | 9d | 2007-03-05 | 2007-03-15 |  | 4d |  |
| 38 | 1.3.2.3.1 | Developer update | 2d | 2007-03-05 | 2007-03-06 |  | 4d | 0d |
| 39 | 1.3.2.3.2 | Adopter review | 5d | 2007-03-07 | 2007-03-13 | 38 | 4d | 0d |
| 40 | 1.3.2.3.3 | Developer update | 1d | 2007-03-14 | 2007-03-14 | 39 | 4d | 0d |
| 41 | 1.3.2.3.4 | Adopter sign-off | 1d | 2007-03-15 | 2007-03-15 | 40 | 4d |  |
| 42 | 1.3.3 | **Update requirements document (task 3.2.1, task 5.3.1)** | 9d | 2007-03-16 | 2007-03-28 | 26 | 4d | 0d |
| 43 | 1.3.3.1 | **Update eligibility requirements** | 9d | 2007-03-16 | 2007-03-28 |  | 4d |  |
| 44 | 1.3.3.1.1 | Developer update | 2d | 2007-03-16 | 2007-03-19 |  | 4d | 0d |
| 45 | 1.3.3.1.2 | Adopter review | 5d | 2007-03-20 | 2007-03-26 | 44 | 4d | 0d |
| 46 | 1.3.3.1.3 | Developer update | 1d | 2007-03-27 | 2007-03-27 | 45 | 4d | 0d |
| 47 | 1.3.3.1.4 | Adopter sign-off | 1d | 2007-03-28 | 2007-03-28 | 46 | 4d |  |
| 48 | 1.3.3.2 | **Update study personel requirements** | 9d | 2007-03-16 | 2007-03-28 |  | 4d |  |
| 49 | 1.3.3.2.1 | Developer update | 2d | 2007-03-16 | 2007-03-19 |  | 4d | 0d |
| 50 | 1.3.3.2.2 | Adopter review | 5d | 2007-03-20 | 2007-03-26 | 49 | 4d | 0d |
| 51 | 1.3.3.2.3 | Developer update | 1d | 2007-03-27 | 2007-03-27 | 50 | 4d | 0d |
| 52 | 1.3.3.2.4 | Adopter sign-off | 1d | 2007-03-28 | 2007-03-28 | 51 | 4d |  |

| ID | WBS | Task | Type | Duration | Start | Finish | Predecessors | Total slack | Free slack |
| --- | --- | --- | --- | --- | --- | --- | --- | --- | --- |
| 53 | 1.3.3.3 | **Update multi-site trial requirements** |  | 9d | 2007-03-16 | 2007-03-28 |  | 4d |  |
| 54 | 1.3.3.3.1 | Developer update |  | 2d | 2007-03-16 | 2007-03-19 |  | 4d | 0d |
| 55 | 1.3.3.3.2 | Adopter review |  | 5d | 2007-03-20 | 2007-03-26 | 54 | 4d | 0d |
| 56 | 1.3.3.3.3 | Developer update |  | 1d | 2007-03-27 | 2007-03-27 | 55 | 4d | 0d |
| 57 | 1.3.3.3.4 | Adopter sign-off |  | 1d | 2007-03-28 | 2007-03-28 | 56 | 4d |  |
| 58 | 1.3.4 | Developer deliver use case document to BAH (task 3.1.1, task 5.2.1) | milestone | 0d | 2007-03-28 | 2007-03-28 | 42 | 4d | 0d |
| 59 | 1.3.5 | BAH review use case document (task 3.1.1, task 5.2.1) |  | 10d | 2007-03-29 | 2007-04-11 | 58 | 4d |  |
| 60 | 1.3.6 | Developer deliver requirements document to BAH (task 3.2.1, task 5.3.1) | milestone | 0d | 2007-03-28 | 2007-03-28 | 42 | 4d | 0d |
| 61 | 1.3.7 | BAH review requirements document (task 3.2.1, task 5.3.1) |  | 10d | 2007-03-29 | 2007-04-11 | 60 | 4d |  |
| 62 | 1.4 | **Analysis and Design** |  | 29d | 2007-03-05 | 2007-04-12 | 23 | 0d |  |
| 63 | 1.4.1 | **Perform level 1 design** |  | 2d | 2007-03-05 | 2007-03-06 |  | 0d |  |
| 64 | 1.4.1.1 | Cursory BRIDG harmonization |  | 1d | 2007-03-05 | 2007-03-05 |  | 0d |  |
| 65 | 1.4.1.2 | Update implementation model |  | 1d | 2007-03-06 | 2007-03-06 | 64 | 0d |  |
| 66 | 1.4.1.3 | Cursory system design |  | 2d | 2007-03-05 | 2007-03-06 |  | 0d |  |
| 67 | 1.4.2 | **Modeling (task 3.3.1)** |  | 27d | 2007-03-07 | 2007-04-12 | 63 | 3d |  |
| 68 | 1.4.2.1 | **Update model** |  | 6d | 2007-03-07 | 2007-03-14 |  | 3d | 0d |
| 69 | 1.4.2.1.1 | **BRIDG harmonization** |  | 3d | 2007-03-07 | 2007-03-09 | 63 | 3d | 0d |
| 70 | 1.4.2.1.1.1 | Harmonize Study model |  | 3d | 2007-03-07 | 2007-03-09 |  | 3d |  |
| 71 | 1.4.2.1.1.2 | Harmonize Personnel model |  | 3d | 2007-03-07 | 2007-03-09 |  | 3d |  |
| 72 | 1.4.2.1.1.3 | Harmonize Multi-site Study model |  | 3d | 2007-03-07 | 2007-03-09 |  | 3d |  |
| 73 | 1.4.2.1.2 | **Model implementation** |  | 3d | 2007-03-12 | 2007-03-14 | 69 | 3d |  |
| 74 | 1.4.2.1.2.1 | Implement Study model |  | 3d | 2007-03-12 | 2007-03-14 |  | 3d |  |
| 75 | 1.4.2.1.2.2 | Implement Personnel model |  | 3d | 2007-03-12 | 2007-03-14 |  | 3d |  |
| 76 | 1.4.2.1.2.3 | Implement Multi-site Study model |  | 3d | 2007-03-12 | 2007-03-14 |  | 3d |  |
| 77 | 1.4.2.2 | Adopter review |  | 5d | 2007-03-15 | 2007-03-21 | 68 | 3d | 0d |

| ID | WBS | Task | Type | Duration | Start | Finish | Predecessors | Total slack | Free slack |
| --- | --- | --- | --- | --- | --- | --- | --- | --- | --- |
| 78 | 1.4.2.3 | **Update model** |  | 6d | 2007-03-22 | 2007-03-29 | 77 | 3d | 0d |
| 79 | 1.4.2.3.1 | **BRIDG harmonization** |  | 3d | 2007-03-22 | 2007-03-26 | 77 | 3d | 0d |
| 80 | 1.4.2.3.1.1 | Harmonize Study model |  | 3d | 2007-03-22 | 2007-03-26 |  | 3d |  |
| 81 | 1.4.2.3.1.2 | Harmonize Personnel model |  | 3d | 2007-03-22 | 2007-03-26 |  | 3d |  |
| 82 | 1.4.2.3.1.3 | Harmonize Multi-site Study model |  | 3d | 2007-03-22 | 2007-03-26 |  | 3d |  |
| 83 | 1.4.2.3.2 | **Model implementation** |  | 3d | 2007-03-27 | 2007-03-29 | 79 | 3d |  |
| 84 | 1.4.2.3.2.1 | Implement Study model |  | 3d | 2007-03-27 | 2007-03-29 |  | 3d |  |
| 85 | 1.4.2.3.2.2 | Implement Personnel model |  | 3d | 2007-03-27 | 2007-03-29 |  | 3d |  |
| 86 | 1.4.2.3.2.3 | Implement Multi-site Study model |  | 3d | 2007-03-27 | 2007-03-29 |  | 3d |  |
| 87 | 1.4.2.4 | Developer deliver UML to BAH (task 3.3.1) | milestone | 0d | 2007-03-29 | 2007-03-29 | 78 | 3d | 0d |
| 88 | 1.4.2.5 | BAH review of UML (task 3.3.1) |  | 10d | 2007-03-30 | 2007-04-12 | 87 | 3d |  |
| 89 | 1.4.3 | **System design (task 3.4.1)** |  | 25d | 2007-03-07 | 2007-04-10 | 63 | 5d |  |
| 90 | 1.4.3.1 | **Design eligibility** |  | 15d | 2007-03-07 | 2007-03-27 |  | 5d | 0d |
| 91 | 1.4.3.1.1 | Draft UML |  | 5d | 2007-03-07 | 2007-03-13 |  | 5d | 0d |
| 92 | 1.4.3.1.2 | Team review |  | 5d | 2007-03-14 | 2007-03-20 | 91 | 5d | 0d |
| 93 | 1.4.3.1.3 | Update design document |  | 5d | 2007-03-21 | 2007-03-27 | 92 | 5d |  |
| 94 | 1.4.3.2 | **Design personnel** |  | 15d | 2007-03-07 | 2007-03-27 |  | 5d | 0d |
| 95 | 1.4.3.2.1 | Draft UML |  | 5d | 2007-03-07 | 2007-03-13 |  | 5d | 0d |
| 96 | 1.4.3.2.2 | Team review |  | 5d | 2007-03-14 | 2007-03-20 | 95 | 5d | 0d |
| 97 | 1.4.3.2.3 | Update design document |  | 5d | 2007-03-21 | 2007-03-27 | 96 | 5d |  |
| 98 | 1.4.3.3 | **Design multi-site study** |  | 15d | 2007-03-07 | 2007-03-27 |  | 5d | 0d |
| 99 | 1.4.3.3.1 | Draft UML |  | 5d | 2007-03-07 | 2007-03-13 |  | 5d | 0d |
| 100 | 1.4.3.3.2 | Team review |  | 5d | 2007-03-14 | 2007-03-20 | 99 | 5d | 0d |
| 101 | 1.4.3.3.3 | Update design document |  | 5d | 2007-03-21 | 2007-03-27 | 100 | 5d |  |
| 102 | 1.4.3.4 | Deliver design doc to BAH (task 3.4.1) | milestone | 0d | 2007-03-27 | 2007-03-27 | 90, 94, 98 | 5d | 0d |
| 103 | 1.4.3.5 | BAH review design doc (task 3.4.1) |  | 10d | 2007-03-28 | 2007-04-10 | 102 | 5d |  |

| ID | WBS | Task | Type | Duration | Start | Finish | Predecessors | Total slack | Free slack |
| --- | --- | --- | --- | --- | --- | --- | --- | --- | --- |
| 104 | 1.5 | **Implementation (task 3.5.1)** |  | 30d | 2007-03-07 | 2007-04-17 | 63 | 0d |  |
| 105 | 1.5.1 | Database |  | 20d | 2007-03-07 | 2007-04-03 |  | 0d |  |
| 106 | 1.5.2 | Deployment |  | 20d | 2007-03-07 | 2007-04-03 |  | 10d |  |
| 107 | 1.5.3 | Business layer |  | 20d | 2007-03-07 | 2007-04-03 |  | 0d |  |
| 108 | 1.5.4 | ESB |  | 20d | 2007-03-07 | 2007-04-03 |  | 0d |  |
| 109 | 1.5.5 | Web interface |  | 20d | 2007-03-07 | 2007-04-03 |  | 0d |  |
| 110 | 1.5.6 | Deliver codebase to BAH (task 3.5.1) | milestone | 0d | 2007-04-03 | 2007-04-03 | 105, 107, 108, 109 | 0d |  |
| 111 | 1.5.7 | BAH review codebase (task 3.5.1) |  | 10d | 2007-04-04 | 2007-04-17 | 110 | 0d |  |
| 112 | 1.6 | **Testing** |  | 30d | 2007-03-01 | 2007-04-11 | 2 | 4d |  |
| 113 | 1.6.1 | **Developer testing** |  | 30d | 2007-03-01 | 2007-04-11 |  | 4d |  |
| 114 | 1.6.1.1 | **Update developer test plan (task 3.6.1, task 5.4.1)** |  | 30d | 2007-03-01 | 2007-04-11 |  | 4d |  |
| 115 | 1.6.1.1.1 | Developer draft |  | 5d | 2007-03-01 | 2007-03-07 |  | 4d | 0d |
| 116 | 1.6.1.1.2 | Adopter review |  | 5d | 2007-03-08 | 2007-03-14 | 115 | 4d | 0d |
| 117 | 1.6.1.1.3 | Developer update |  | 5d | 2007-03-15 | 2007-03-21 | 116 | 4d | 0d |
| 118 | 1.6.1.1.4 | Adopter review and sign |  | 5d | 2007-03-22 | 2007-03-28 | 117 | 4d | 0d |
| 119 | 1.6.1.1.5 | Deliver signed test plan to BAH (task 3.6.1, task 5.4.1) | milestone | 0d | 2007-03-28 | 2007-03-28 | 118 | 4d | 0d |
| 120 | 1.6.1.1.6 | BAH review signed test plan (task 3.6.1, task 5.4.1) |  | 10d | 2007-03-29 | 2007-04-11 | 119 | 4d |  |
| 121 | 1.6.1.2 | **Integration and system testing (task 3.8.1)** |  | 10d | 2007-03-28 | 2007-04-10 | 110FS-5d, 115 | 5d |  |
| 122 | 1.6.1.2.1 | Generate test data |  | 1d | 2007-03-28 | 2007-03-28 |  | 14d |  |
| 123 | 1.6.1.2.2 | Write tests |  | 3d | 2007-03-28 | 2007-03-30 |  | 10d | 0d |
| 124 | 1.6.1.2.3 | Validate tests |  | 1d | 2007-04-02 | 2007-04-02 | 123 | 10d | 0d |
| 125 | 1.6.1.2.4 | Generate test report |  | 1d | 2007-04-03 | 2007-04-03 | 124 | 10d |  |
| 126 | 1.6.1.2.5 | Deliver test report to BAH (task 3.8.1) | milestone | 0d | 2007-03-28 | 2007-03-28 |  | 15d |  |
| 127 | 1.6.1.2.6 | BAH review test report (task 3.8.1) |  | 10d | 2007-03-28 | 2007-04-10 |  | 5d |  |

| ID | WBS | Task | Type | Duration | Start | Finish | Predecessors | Total slack | Free slack | Constraint |
| --- | --- | --- | --- | --- | --- | --- | --- | --- | --- | --- |
| 128 | 1.6.2 | **Adopter testing** |  | 30d | 2007-03-01 | 2007-04-11 |  | 4d |  |  |
| 129 | 1.6.2.1 | **Update adopter test plan (task 5.5.1)** |  | 30d | 2007-03-01 | 2007-04-11 |  | 4d |  |  |
| 130 | 1.6.2.1.1 | Adopter update test script |  | 5d | 2007-03-01 | 2007-03-07 |  | 4d | 0d |  |
| 131 | 1.6.2.1.2 | Adopter update test approach |  | 5d | 2007-03-08 | 2007-03-14 | 130 | 4d | 0d |  |
| 132 | 1.6.2.1.3 | Developer review |  | 5d | 2007-03-15 | 2007-03-21 | 131 | 4d | 0d |  |
| 133 | 1.6.2.1.4 | Adopter update |  | 5d | 2007-03-22 | 2007-03-28 | 132 | 4d | 0d |  |
| 134 | 1.6.2.1.5 | Developer deliver adopter test plan to BAH (task 5.5.1) | milestone | 0d | 2007-03-28 | 2007-03-28 | 133 | 4d | 0d |  |
| 135 | 1.6.2.1.6 | BAH review adopter test plan (task 5.5.1) |  | 10d | 2007-03-29 | 2007-04-11 | 134 | 4d |  |  |
| 136 | 1.6.2.2 | **QA testing (task 5.6.1)** |  | 22d | 2007-03-08 | 2007-04-06 | 130 | 7d |  |  |
| 137 | 1.6.2.2.1 | Adopter create test data |  | 5d | 2007-03-08 | 2007-03-14 |  | 7d | 0d |  |
| 138 | 1.6.2.2.2 | Adopter perform test script |  | 5d | 2007-03-15 | 2007-03-21 | 137 | 7d | 0d |  |
| 139 | 1.6.2.2.3 | Adopter document results |  | 2d | 2007-03-22 | 2007-03-23 | 138 | 7d | 0d |  |
| 140 | 1.6.2.2.4 | Adopter log bugs |  | 2d | 2007-03-26 | 2007-03-27 | 139 | 15d |  |  |
| 141 | 1.6.2.2.5 | Developer deliver adopter test report to BAH (task 5.6.1) | milestone | 0d | 2007-03-23 | 2007-03-23 | 139 | 7d | 0d |  |
| 142 | 1.6.2.2.6 | BAH review adopter test report (task 5.6.1) |  | 10d | 2007-03-26 | 2007-04-06 | 141 | 7d |  |  |
| 143 | 2 | **Iteration 1 (eligibility, study personnel, multi-site study)** |  | 32d | 2007-03-01 | 2007-04-13 |  | 2d |  |  |
| 144 | 2.1 | Iteration start | milestone | 0d | 2007-03-01 | 2007-03-01 |  | 2d | 0d | start no earlier than 2007-03-01 |
| 145 | 2.2 | **Project Management** |  | 30d | 2007-03-01 | 2007-04-11 | 144 | 4d |  |  |
| 146 | 2.2.1 | **Draft project plan (task 1.1)** |  | 30d | 2007-03-01 | 2007-04-11 |  | 4d |  |  |
| 147 | 2.2.1.1 | Developer draft |  | 5d | 2007-03-01 | 2007-03-07 |  | 4d | 0d |  |
| 148 | 2.2.1.2 | BAH review |  | 5d | 2007-03-08 | 2007-03-14 | 147 | 4d | 0d |  |
| 149 | 2.2.1.3 | Developer update |  | 5d | 2007-03-15 | 2007-03-21 | 148 | 4d | 0d |  |
| 150 | 2.2.1.4 | Adopter review |  | 3d | 2007-03-22 | 2007-03-26 | 149 | 4d | 0d |  |
| 151 | 2.2.1.5 | Developer update |  | 2d | 2007-03-27 | 2007-03-28 | 150 | 4d | 0d |  |
| 152 | 2.2.1.6 | Deliver project plan to BAH (task 1.1) | milestone | 0d | 2007-03-28 | 2007-03-28 | 151 | 4d | 0d |  |
| 153 | 2.2.1.7 | BAH review project plan (task 1.1) |  | 10d | 2007-03-29 | 2007-04-11 | 152 | 4d |  |  |

| ID | WBS | Task | Type | Duration | Start | Finish | Predecessors | Total slack | Free slack |
| --- | --- | --- | --- | --- | --- | --- | --- | --- | --- |
| 154 | 2.2.2 | **Update risk matrix (task 1.3.1)** |  | 20d | 2007-03-01 | 2007-03-28 |  | 4d |  |
| 155 | 2.2.2.1 | Update risk matrix for week 1 |  | 5d | 2007-03-01 | 2007-03-07 |  | 4d | 0d |
| 156 | 2.2.2.2 | Update risk matrix for week 2 |  | 5d | 2007-03-08 | 2007-03-14 | 155 | 4d | 0d |
| 157 | 2.2.2.3 | Deliver risk matrix to BAH (task 1.3.1) | milestone | 0d | 2007-03-14 | 2007-03-14 | 156 | 4d | 0d |
| 158 | 2.2.2.4 | BAH review risk matrix (task 1.3.1) |  | 10d | 2007-03-15 | 2007-03-28 | 157 | 14d |  |
| 159 | 2.2.3 | **Monthly report (task 1.3.1)** |  | 20d | 2007-03-15 | 2007-04-11 | 157 | 4d |  |
| 160 | 2.2.3.1 | Update risk matrix for week 3 |  | 5d | 2007-03-15 | 2007-03-21 |  | 4d | 0d |
| 161 | 2.2.3.2 | Update risk matrix for week 4 |  | 5d | 2007-03-22 | 2007-03-28 | 160 | 4d | 0d |
| 162 | 2.2.3.3 | Deliver monthly report and risk matrix to BAH (task 1.3.1) | milestone | 0d | 2007-03-28 | 2007-03-28 | 161 | 4d | 0d |
| 163 | 2.2.3.4 | BAH review monthly report and risk matrix (task 1.3.1) |  | 10d | 2007-03-29 | 2007-04-11 | 162 | 4d |  |
| 164 | 2.3 | **Requirements and use cases** |  | 30d | 2007-03-01 | 2007-04-11 | 144 | 2d |  |
| 165 | 2.3.1 | **Create level 1 use cases and requirements** |  | 2d | 2007-03-01 | 2007-03-02 |  | 2d | 0d |
| 166 | 2.3.1.1 | Use case document (task 3.1.1) |  | 1d | 2007-03-01 | 2007-03-01 |  | 2d | 0d |
| 167 | 2.3.1.2 | Requirements document (3.2.1) |  | 1d | 2007-03-02 | 2007-03-02 | 166 | 2d |  |
| 168 | 2.3.2 | **Update use case document (task 3.1.1, task 5.2.1)** |  | 9d | 2007-03-05 | 2007-03-15 | 165 | 4d | 0d |
| 169 | 2.3.2.1 | **Update eligibility use cases** |  | 9d | 2007-03-05 | 2007-03-15 |  | 4d |  |
| 170 | 2.3.2.1.1 | Developer update |  | 2d | 2007-03-05 | 2007-03-06 |  | 4d | 0d |
| 171 | 2.3.2.1.2 | Adopter review |  | 5d | 2007-03-07 | 2007-03-13 | 170 | 4d | 0d |
| 172 | 2.3.2.1.3 | Developer update |  | 1d | 2007-03-14 | 2007-03-14 | 171 | 4d | 0d |
| 173 | 2.3.2.1.4 | Adopter sign-off |  | 1d | 2007-03-15 | 2007-03-15 | 172 | 4d |  |
| 174 | 2.3.2.2 | **Update study personel use cases** |  | 9d | 2007-03-05 | 2007-03-15 |  | 4d |  |
| 175 | 2.3.2.2.1 | Developer update |  | 2d | 2007-03-05 | 2007-03-06 |  | 4d | 0d |
| 176 | 2.3.2.2.2 | Adopter review |  | 5d | 2007-03-07 | 2007-03-13 | 175 | 4d | 0d |
| 177 | 2.3.2.2.3 | Developer update |  | 1d | 2007-03-14 | 2007-03-14 | 176 | 4d | 0d |
| 178 | 2.3.2.2.4 | Adopter sign-off |  | 1d | 2007-03-15 | 2007-03-15 | 177 | 4d |  |

| ID | WBS | Task | Type | Duration | Start | Finish | Predecessors | Total slack | Free slack |
| --- | --- | --- | --- | --- | --- | --- | --- | --- | --- |
| 179 | 2.3.2.3 | **Update multi-site trial use cases** |  | 9d | 2007-03-05 | 2007-03-15 |  | 4d |  |
| 180 | 2.3.2.3.1 | Developer update |  | 2d | 2007-03-05 | 2007-03-06 |  | 4d | 0d |
| 181 | 2.3.2.3.2 | Adopter review |  | 5d | 2007-03-07 | 2007-03-13 | 180 | 4d | 0d |
| 182 | 2.3.2.3.3 | Developer update |  | 1d | 2007-03-14 | 2007-03-14 | 181 | 4d | 0d |
| 183 | 2.3.2.3.4 | Adopter sign-off |  | 1d | 2007-03-15 | 2007-03-15 | 182 | 4d |  |
| 184 | 2.3.3 | **Update requirements document (task 3.2.1, task 5.3.1)** |  | 9d | 2007-03-16 | 2007-03-28 | 168 | 4d | 0d |
| 185 | 2.3.3.1 | **Update eligibility requirements** |  | 9d | 2007-03-16 | 2007-03-28 |  | 4d |  |
| 186 | 2.3.3.1.1 | Developer update |  | 2d | 2007-03-16 | 2007-03-19 |  | 4d | 0d |
| 187 | 2.3.3.1.2 | Adopter review |  | 5d | 2007-03-20 | 2007-03-26 | 186 | 4d | 0d |
| 188 | 2.3.3.1.3 | Developer update |  | 1d | 2007-03-27 | 2007-03-27 | 187 | 4d | 0d |
| 189 | 2.3.3.1.4 | Adopter sign-off |  | 1d | 2007-03-28 | 2007-03-28 | 188 | 4d |  |
| 190 | 2.3.3.2 | **Update study personel requirements** |  | 9d | 2007-03-16 | 2007-03-28 |  | 4d |  |
| 191 | 2.3.3.2.1 | Developer update |  | 2d | 2007-03-16 | 2007-03-19 |  | 4d | 0d |
| 192 | 2.3.3.2.2 | Adopter review |  | 5d | 2007-03-20 | 2007-03-26 | 191 | 4d | 0d |
| 193 | 2.3.3.2.3 | Developer update |  | 1d | 2007-03-27 | 2007-03-27 | 192 | 4d | 0d |
| 194 | 2.3.3.2.4 | Adopter sign-off |  | 1d | 2007-03-28 | 2007-03-28 | 193 | 4d |  |
| 195 | 2.3.3.3 | **Update multi-site trial requirements** |  | 9d | 2007-03-16 | 2007-03-28 |  | 4d |  |
| 196 | 2.3.3.3.1 | Developer update |  | 2d | 2007-03-16 | 2007-03-19 |  | 4d | 0d |
| 197 | 2.3.3.3.2 | Adopter review |  | 5d | 2007-03-20 | 2007-03-26 | 196 | 4d | 0d |
| 198 | 2.3.3.3.3 | Developer update |  | 1d | 2007-03-27 | 2007-03-27 | 197 | 4d | 0d |
| 199 | 2.3.3.3.4 | Adopter sign-off |  | 1d | 2007-03-28 | 2007-03-28 | 198 | 4d |  |
| 200 | 2.3.4 | Developer deliver use case document to BAH (task 3.1.1, task 5.2.1) | milestone | 0d | 2007-03-28 | 2007-03-28 | 184 | 4d | 0d |
| 201 | 2.3.5 | BAH review use case document (task 3.1.1, task 5.2.1) |  | 10d | 2007-03-29 | 2007-04-11 | 200 | 4d |  |
| 202 | 2.3.6 | Developer deliver requirements document to BAH (task 3.2.1, task 5.3.1) | milestone | 0d | 2007-03-28 | 2007-03-28 | 184 | 4d | 0d |
| 203 | 2.3.7 | BAH review requirements document (task 3.2.1, task 5.3.1) |  | 10d | 2007-03-29 | 2007-04-11 | 202 | 4d |  |

| ID | WBS | Task | Type | Duration | Start | Finish | Predecessors | Total slack | Free slack |
| --- | --- | --- | --- | --- | --- | --- | --- | --- | --- |
| 204 | 2.4 | **Analysis and Design** |  | 29d | 2007-03-05 | 2007-04-12 | 165 | 2d |  |
| 205 | 2.4.1 | **Perform level 1 design** |  | 2d | 2007-03-05 | 2007-03-06 |  | 2d | 0d |
| 206 | 2.4.1.1 | Cursory BRIDG harmonization |  | 1d | 2007-03-05 | 2007-03-05 |  | 2d | 0d |
| 207 | 2.4.1.2 | Update implementation model |  | 1d | 2007-03-06 | 2007-03-06 | 206 | 2d |  |
| 208 | 2.4.1.3 | Cursory system design |  | 2d | 2007-03-05 | 2007-03-06 |  | 2d |  |
| 209 | 2.4.2 | **Modeling (task 3.3.1)** |  | 27d | 2007-03-07 | 2007-04-12 | 205 | 3d |  |
| 210 | 2.4.2.1 | **Update model** |  | 6d | 2007-03-07 | 2007-03-14 |  | 3d | 0d |
| 211 | 2.4.2.1.1 | **BRIDG harmonization** |  | 3d | 2007-03-07 | 2007-03-09 | 205 | 3d | 0d |
| 212 | 2.4.2.1.1.1 | Harmonize Study model |  | 3d | 2007-03-07 | 2007-03-09 |  | 3d |  |
| 213 | 2.4.2.1.1.2 | Harmonize Personnel model |  | 3d | 2007-03-07 | 2007-03-09 |  | 3d |  |
| 214 | 2.4.2.1.1.3 | Harmonize Multi-site Study model |  | 3d | 2007-03-07 | 2007-03-09 |  | 3d |  |
| 215 | 2.4.2.1.2 | **Model implementation** |  | 3d | 2007-03-12 | 2007-03-14 | 211 | 3d |  |
| 216 | 2.4.2.1.2.1 | Implement Study model |  | 3d | 2007-03-12 | 2007-03-14 |  | 3d |  |
| 217 | 2.4.2.1.2.2 | Implement Personnel model |  | 3d | 2007-03-12 | 2007-03-14 |  | 3d |  |
| 218 | 2.4.2.1.2.3 | Implement Multi-site Study model |  | 3d | 2007-03-12 | 2007-03-14 |  | 3d |  |
| 219 | 2.4.2.2 | Adopter review |  | 5d | 2007-03-15 | 2007-03-21 | 210 | 3d | 0d |
| 220 | 2.4.2.3 | **Update model** |  | 6d | 2007-03-22 | 2007-03-29 | 219 | 3d | 0d |
| 221 | 2.4.2.3.1 | **BRIDG harmonization** |  | 3d | 2007-03-22 | 2007-03-26 | 219 | 3d | 0d |
| 222 | 2.4.2.3.1.1 | Harmonize Study model |  | 3d | 2007-03-22 | 2007-03-26 |  | 3d |  |
| 223 | 2.4.2.3.1.2 | Harmonize Personnel model |  | 3d | 2007-03-22 | 2007-03-26 |  | 3d |  |
| 224 | 2.4.2.3.1.3 | Harmonize Multi-site Study model |  | 3d | 2007-03-22 | 2007-03-26 |  | 3d |  |
| 225 | 2.4.2.3.2 | **Model implementation** |  | 3d | 2007-03-27 | 2007-03-29 | 221 | 3d |  |
| 226 | 2.4.2.3.2.1 | Implement Study model |  | 3d | 2007-03-27 | 2007-03-29 |  | 3d |  |
| 227 | 2.4.2.3.2.2 | Implement Personnel model |  | 3d | 2007-03-27 | 2007-03-29 |  | 3d |  |
| 228 | 2.4.2.3.2.3 | Implement Multi-site Study model |  | 3d | 2007-03-27 | 2007-03-29 |  | 3d |  |
| 229 | 2.4.2.4 | Developer deliver UML to BAH (task 3.3.1) | milestone | 0d | 2007-03-29 | 2007-03-29 | 220 | 3d | 0d |
| 230 | 2.4.2.5 | BAH review of UML (task 3.3.1) |  | 10d | 2007-03-30 | 2007-04-12 | 229 | 3d |  |

| ID | WBS | Task | Type | Duration | Start | Finish | Predecessors | Total slack | Free slack |
| --- | --- | --- | --- | --- | --- | --- | --- | --- | --- |
| 231 | 2.4.3 | **System design (task 3.4.1)** |  | 25d | 2007-03-07 | 2007-04-10 | 205 | 5d |  |
| 232 | 2.4.3.1 | **Design eligibility** |  | 15d | 2007-03-07 | 2007-03-27 |  | 5d | 0d |
| 233 | 2.4.3.1.1 | Draft UML |  | 5d | 2007-03-07 | 2007-03-13 |  | 5d | 0d |
| 234 | 2.4.3.1.2 | Team review |  | 5d | 2007-03-14 | 2007-03-20 | 233 | 5d | 0d |
| 235 | 2.4.3.1.3 | Update design document |  | 5d | 2007-03-21 | 2007-03-27 | 234 | 5d |  |
| 236 | 2.4.3.2 | **Design personnel** |  | 15d | 2007-03-07 | 2007-03-27 |  | 5d | 0d |
| 237 | 2.4.3.2.1 | Draft UML |  | 5d | 2007-03-07 | 2007-03-13 |  | 5d | 0d |
| 238 | 2.4.3.2.2 | Team review |  | 5d | 2007-03-14 | 2007-03-20 | 237 | 5d | 0d |
| 239 | 2.4.3.2.3 | Update design document |  | 5d | 2007-03-21 | 2007-03-27 | 238 | 5d |  |
| 240 | 2.4.3.3 | **Design multi-site study** |  | 15d | 2007-03-07 | 2007-03-27 |  | 5d | 0d |
| 241 | 2.4.3.3.1 | Draft UML |  | 5d | 2007-03-07 | 2007-03-13 |  | 5d | 0d |
| 242 | 2.4.3.3.2 | Team review |  | 5d | 2007-03-14 | 2007-03-20 | 241 | 5d | 0d |
| 243 | 2.4.3.3.3 | Update design document |  | 5d | 2007-03-21 | 2007-03-27 | 242 | 5d |  |
| 244 | 2.4.3.4 | Deliver design doc to BAH (task 3.4.1) | milestone | 0d | 2007-03-27 | 2007-03-27 | 232, 236, 240 | 5d | 0d |
| 245 | 2.4.3.5 | BAH review design doc (task 3.4.1) |  | 10d | 2007-03-28 | 2007-04-10 | 244 | 5d |  |
| 246 | 2.5 | **Implementation (task 3.5.1)** |  | 28d | 2007-03-07 | 2007-04-13 | 205 | 2d |  |
| 247 | 2.5.1 | **Database** |  | 5d | 2007-03-07 | 2007-03-13 |  | 2d |  |
| 248 | 2.5.1.1 | **Eligibility model** |  | 3d | 2007-03-07 | 2007-03-09 |  | 2d | 0d |
| 249 | 2.5.1.1.1 | Create DDLs |  | 1d | 2007-03-07 | 2007-03-07 |  | 2d | 0d |
| 250 | 2.5.1.1.2 | Apply to database |  | 1d | 2007-03-08 | 2007-03-08 | 249 | 2d | 0d |
| 251 | 2.5.1.1.3 | Create test data |  | 1d | 2007-03-09 | 2007-03-09 | 250 | 2d |  |
| 252 | 2.5.1.2 | **Study personnel** |  | 5d | 2007-03-07 | 2007-03-13 |  | 15d |  |
| 253 | 2.5.1.2.1 | Investigate how to implement Person with Role |  | 2d | 2007-03-07 | 2007-03-08 |  | 15d | 0d |
| 254 | 2.5.1.2.2 | Create DDLs |  | 1d | 2007-03-09 | 2007-03-09 | 253 | 15d | 0d |
| 255 | 2.5.1.2.3 | Apply to database |  | 1d | 2007-03-12 | 2007-03-12 | 254 | 15d | 0d |
| 256 | 2.5.1.2.4 | Create test data |  | 1d | 2007-03-13 | 2007-03-13 | 255 | 15d |  |

| ID | WBS | Task | Type | Duration | Start | Finish | Predecessors | Total slack | Free slack |
| --- | --- | --- | --- | --- | --- | --- | --- | --- | --- |
| 257 | 2.5.1.3 | **Multi-site** |  | 3d | 2007-03-07 | 2007-03-09 |  | 4d | 0d |
| 258 | 2.5.1.3.1 | Create DDLs |  | 1d | 2007-03-07 | 2007-03-07 |  | 4d | 0d |
| 259 | 2.5.1.3.2 | Apply to database |  | 1d | 2007-03-08 | 2007-03-08 | 258 | 4d | 0d |
| 260 | 2.5.1.3.3 | Create test data |  | 1d | 2007-03-09 | 2007-03-09 | 259 | 4d |  |
| 261 | 2.5.2 | **Deployment** |  | 2d | 2007-03-12 | 2007-03-13 |  | 4d |  |
| 262 | 2.5.2.1 | Deploy a second C3PR for multi-site testing |  | 2d | 2007-03-12 | 2007-03-13 | 257 | 4d | 0d |
| 263 | 2.5.3 | **Business layer** |  | 6d | 2007-03-14 | 2007-03-21 |  | 4d |  |
| 264 | 2.5.3.1 | **Implement C3PR registration APIs** |  | 6d | 2007-03-14 | 2007-03-21 | 262 | 4d | 0d |
| 265 | 2.5.3.1.1 | Design APIs |  | 2d | 2007-03-14 | 2007-03-15 |  | 4d | 0d |
| 266 | 2.5.3.1.2 | Implement APIs |  | 3d | 2007-03-16 | 2007-03-20 | 265 | 4d | 0d |
| 267 | 2.5.3.1.3 | Deploy APIs |  | 1d | 2007-03-21 | 2007-03-21 | 266 | 4d |  |
| 268 | 2.5.4 | **ESB** |  | 5d | 2007-03-22 | 2007-03-28 |  | 4d | 2d |
| 269 | 2.5.4.1 | Implement inbound-binding component for C3PR registration |  | 5d | 2007-03-22 | 2007-03-28 | 264 | 4d |  |
| 270 | 2.5.5 | **Web interface** |  | 5d | 2007-03-07 | 2007-03-13 |  | 15d | 13d |
| 271 | 2.5.5.1 | **Modify study management interface** |  | 5d | 2007-03-07 | 2007-03-13 |  | 15d |  |
| 272 | 2.5.5.1.1 | Manage eligibility criteria |  | 5d | 2007-03-07 | 2007-03-13 |  | 15d |  |
| 273 | 2.5.5.1.2 | Manage multi-site study |  | 5d | 2007-03-07 | 2007-03-13 |  | 15d |  |
| 274 | 2.5.5.2 | **Modify study personnel management interface** |  | 5d | 2007-03-07 | 2007-03-13 |  | 15d |  |
| 275 | 2.5.5.2.1 | Manage study personnel |  | 5d | 2007-03-07 | 2007-03-13 |  | 15d |  |
| 276 | 2.5.5.3 | **Modify registration interface** |  | 5d | 2007-03-07 | 2007-03-13 |  | 15d |  |
| 277 | 2.5.5.3.1 | Check eligibility |  | 5d | 2007-03-07 | 2007-03-13 |  | 15d |  |
| 278 | 2.5.6 | Deliver codebase to BAH (task 3.5.1) | milestone | 0d | 2007-03-30 | 2007-03-30 | 247, 263, 268, 270, 312 | 2d | 0d |
| 279 | 2.5.7 | BAH review codebase (task 3.5.1) |  | 10d | 2007-04-02 | 2007-04-13 | 278 | 2d |  |
| 280 | 2.6 | **Testing** |  | 30d | 2007-03-01 | 2007-04-11 | 144 | 4d |  |
| 281 | 2.6.1 | **Developer testing** |  | 30d | 2007-03-01 | 2007-04-11 |  | 4d |  |
| 282 | 2.6.1.1 | **Update developer test plan (task 3.6.1, task 5.4.1)** |  | 30d | 2007-03-01 | 2007-04-11 |  | 4d |  |
| 283 | 2.6.1.1.1 | Developer draft |  | 5d | 2007-03-01 | 2007-03-07 |  | 4d | 0d |
| 284 | 2.6.1.1.2 | Adopter review |  | 5d | 2007-03-08 | 2007-03-14 | 283 | 4d | 0d |
| 285 | 2.6.1.1.3 | Developer update |  | 5d | 2007-03-15 | 2007-03-21 | 284 | 4d | 0d |
| 286 | 2.6.1.1.4 | Adopter review and sign |  | 5d | 2007-03-22 | 2007-03-28 | 285 | 4d | 0d |
| 287 | 2.6.1.1.5 | Deliver signed test plan to BAH (task 3.6.1, task 5.4.1) | milestone | 0d | 2007-03-28 | 2007-03-28 | 286 | 4d | 0d |
| 288 | 2.6.1.1.6 | BAH review signed test plan (task 3.6.1, task 5.4.1) |  | 10d | 2007-03-29 | 2007-04-11 | 287 | 4d |  |

| ID | WBS | Task | Type | Duration | Start | Finish | Predecessors | Total slack | Free slack |
| --- | --- | --- | --- | --- | --- | --- | --- | --- | --- |
| 289 | 2.6.1.2 | **Integration and system testing (task 3.8.1)** |  | 10d | 2007-03-26 | 2007-04-06 | 283, 278FS-5d | 7d |  |
| 290 | 2.6.1.2.1 | Generate test data |  | 1d | 2007-03-26 | 2007-03-26 |  | 16d |  |
| 291 | 2.6.1.2.2 | Write tests |  | 3d | 2007-03-26 | 2007-03-28 |  | 12d | 0d |
| 292 | 2.6.1.2.3 | Validate tests |  | 1d | 2007-03-29 | 2007-03-29 | 291 | 12d | 0d |
| 293 | 2.6.1.2.4 | Generate test report |  | 1d | 2007-03-30 | 2007-03-30 | 292 | 12d |  |
| 294 | 2.6.1.2.5 | Deliver test report to BAH (task 3.8.1) | milestone | 0d | 2007-03-26 | 2007-03-26 |  | 17d |  |
| 295 | 2.6.1.2.6 | BAH review test report (task 3.8.1) |  | 10d | 2007-03-26 | 2007-04-06 |  | 7d |  |
| 296 | 2.6.2 | **Adopter testing** |  | 30d | 2007-03-01 | 2007-04-11 |  | 4d |  |
| 297 | 2.6.2.1 | **Update adopter test plan (task 5.5.1)** |  | 30d | 2007-03-01 | 2007-04-11 |  | 4d |  |
| 298 | 2.6.2.1.1 | Adopter update test script |  | 5d | 2007-03-01 | 2007-03-07 |  | 4d | 0d |
| 299 | 2.6.2.1.2 | Adopter update test approach |  | 5d | 2007-03-08 | 2007-03-14 | 298 | 4d | 0d |
| 300 | 2.6.2.1.3 | Developer review |  | 5d | 2007-03-15 | 2007-03-21 | 299 | 4d | 0d |
| 301 | 2.6.2.1.4 | Adopter update |  | 5d | 2007-03-22 | 2007-03-28 | 300 | 4d | 0d |
| 302 | 2.6.2.1.5 | Developer deliver adopter test plan to BAH (task 5.5.1) | milestone | 0d | 2007-03-28 | 2007-03-28 | 301 | 4d | 0d |
| 303 | 2.6.2.1.6 | BAH review adopter test plan (task 5.5.1) |  | 10d | 2007-03-29 | 2007-04-11 | 302 | 4d |  |
| 304 | 2.6.2.2 | **QA testing (task 5.6.1)** |  | 22d | 2007-03-08 | 2007-04-06 | 298 | 7d |  |
| 305 | 2.6.2.2.1 | Adopter create test data |  | 5d | 2007-03-08 | 2007-03-14 |  | 7d | 0d |
| 306 | 2.6.2.2.2 | Adopter perform test script |  | 5d | 2007-03-15 | 2007-03-21 | 305 | 7d | 0d |
| 307 | 2.6.2.2.3 | Adopter document results |  | 2d | 2007-03-22 | 2007-03-23 | 306 | 7d | 0d |
| 308 | 2.6.2.2.4 | Adopter log bugs |  | 2d | 2007-03-26 | 2007-03-27 | 307 | 15d |  |
| 309 | 2.6.2.2.5 | Developer deliver adopter test report to BAH (task 5.6.1) | milestone | 0d | 2007-03-23 | 2007-03-23 | 307 | 7d | 0d |
| 310 | 2.6.2.2.6 | BAH review adopter test report (task 5.6.1) |  | 10d | 2007-03-26 | 2007-04-06 | 309 | 7d |  |
| 311 | 3 | **Iteration 2 (eligibility, study personnel, multi-site study)** |  | 108d? | 2006-11-01 | 2007-03-30 |  | 12d |  |
| 312 | 3.1 | **caDSR integration** |  | 10d | 2007-03-19 | 2007-03-30 | 317 | 2d | 0d |
| 313 | 3.1.1 | Review C3PR Release 1 code |  | 5d | 2007-03-19 | 2007-03-23 |  | 2d | 0d |
| 314 | 3.1.2 | Implement import eligibility criteria from caDSR |  | 5d | 2007-03-26 | 2007-03-30 | 313 | 2d |  |
| 315 | 3.2 | Security |  | 1d? | 2006-11-01 | 2006-11-01 |  | 119d |  |
| 316 | 3.3 | Business logic |  | 1d? | 2006-11-01 | 2006-11-01 |  | 119d |  |
| 317 | 3.4 | Implement import eligibility criteria from file |  | 5d | 2007-03-12 | 2007-03-16 | 248 | 2d | 0d |
